# ProjetoAshtanga

Schedule from MS Project, 2019-09-02 to 2020-01-03, costs in $, A marks actual dates.

## Calendars

- Padrão: Mon-Fri 08:00-12:00, 13:00-17:00; Sat-Sun off.

## Resources

| Resource | Rate |
| --- | --- |
| Gabriel Rocha | 20 |
| Gabriel Marra | 20 |
| Tomas | 20 |
| Leonardo | 20 |

## Schedule

| ID | WBS | Task | Type | Duration | Start | Finish | Predecessors | Complete | Remaining | Baseline start | Baseline finish | Baseline duration | Total slack | Free slack | Resources | Work | Actual work | Cost | Baseline cost | Actual cost |
| --- | --- | --- | --- | --- | --- | --- | --- | --- | --- | --- | --- | --- | --- | --- | --- | --- | --- | --- | --- | --- |
| 1 | 1 | **Projeto AshTanga** |  | 89.62d? | 2019-09-02 08:00 A | 2020-01-03 14:00 |  | 32% | 61.38d? | 2019-09-02 08:00 | 2019-12-16 12:00 | 75.5d? | 0d |  |  | 226.5h | 42.5h | 4,530 | 5,390 | 850 |
| 2 | 1.1 | **Prospecção** |  | 16d | 2019-09-02 08:00 A | 2019-09-23 20:00 A |  | 100% |  | 2019-09-02 08:00 | 2019-09-20 20:00 | 15d |  |  |  | 15.5h | 15.5h | 310 | 290 | 310 |
| 3 | 1.1.1 | **PTEC** |  | 7d | 2019-09-02 08:00 A | 2019-09-10 20:00 A |  | 100% |  | 2019-09-02 08:00 | 2019-09-09 20:00 | 6d |  |  |  | 11h | 11h | 220 | 200 | 220 |
| 4 | 1.1.1.1 | Estudar domínio de aplicação |  | 1.12d | 2019-09-02 08:00 A | 2019-09-03 09:00 A |  | 100% |  | 2019-09-02 08:00 | 2019-09-02 17:00 | 1d |  |  | Gabriel Marra | 2h | 2h | 40 | 20 | 40 |
| 5 | 1.1.1.2 | Reunir-se com o fornecedor de requisitos |  | 1.12d | 2019-09-03 18:00 A | 2019-09-05 21:00 A | 4 | 100% |  | 2019-09-02 18:00 | 2019-09-04 21:00 | 1.12d |  |  | Gabriel Rocha | 3h | 3h | 60 | 60 | 60 |
| 6 | 1.1.1.3 | Redigir PTEC |  | 1d | 2019-09-06 08:00 A | 2019-09-06 17:00 A | 5 | 100% |  | 2019-09-05 08:00 | 2019-09-05 17:00 | 1d |  |  | Gabriel Marra | 5h | 5h | 100 | 100 | 100 |
| 7 | 1.1.1.4 | Revisar PTEC |  | 1d | 2019-09-06 18:00 A | 2019-09-10 20:00 A | 6 | 100% |  | 2019-09-05 18:00 | 2019-09-09 20:00 | 1d |  |  | Gabriel Rocha | 1h | 1h | 20 | 20 | 20 |
| 8 | 1.1.1.5 | Aprovar PTEC | milestone | 0d | 2019-09-10 20:00 A | 2019-09-10 20:00 A | 7 | 100% |  | 2019-09-09 20:00 | 2019-09-09 20:00 |  |  |  |  |  |  |  |  |  |
| 9 | 1.1.2 | **Est. Prel. Tam** |  | 6d | 2019-09-10 20:00 A | 2019-09-18 20:00 A |  | 100% |  | 2019-09-09 20:00 | 2019-09-17 20:00 | 6d |  |  |  | 2h | 2h | 40 | 40 | 40 |
| 10 | 1.1.2.1 | Estimar tamanho do projeto |  | 1d | 2019-09-10 20:00 A | 2019-09-13 22:00 A | 7 | 100% |  | 2019-09-09 20:00 | 2019-09-12 22:00 | 1d |  |  | Tomas | 1h | 1h | 20 | 20 | 20 |
| 11 | 1.1.2.2 | Revisar estimativa de tamanho do projeto |  | 2d | 2019-09-16 08:00 A | 2019-09-18 20:00 A | 10 | 100% |  | 2019-09-13 08:00 | 2019-09-17 20:00 | 2d |  |  | Gabriel Marra; Gabriel Rocha | 1h | 1h | 20 | 20 | 20 |
| 12 | 1.1.3 | **Est. Prel. Cronograma e orçamento** |  | 3d | 2019-09-19 08:00 A | 2019-09-23 20:00 A |  | 100% |  | 2019-09-18 08:00 | 2019-09-20 20:00 | 3d |  |  |  | 2.5h | 2.5h | 50 | 50 | 50 |
| 13 | 1.1.3.1 | Elaborar cronograma e orçamento preliminares |  | 1d | 2019-09-19 08:00 A | 2019-09-19 17:00 A | 9 | 100% |  | 2019-09-18 08:00 | 2019-09-18 17:00 | 1d |  |  | Gabriel Marra | 2h | 2h | 40 | 40 | 40 |
| 14 | 1.1.3.2 | Revisar cronograma e orçamento preliminares |  | 1d | 2019-09-19 18:00 A | 2019-09-23 20:00 A | 13 | 100% |  | 2019-09-18 18:00 | 2019-09-20 20:00 | 1d |  |  | Gabriel Rocha | 0.5h | 0.5h | 10 | 10 | 10 |
| 15 | 1.2 | **Análise** |  | 4d | 2019-09-11 08:00 | 2019-09-16 17:00 |  |  |  | 2019-09-10 08:00 | 2019-10-30 17:00 | 37d |  |  |  | 41h |  | 820 | 1,040 |  |
| 16 | 1.2.1 | **Documento de requisitos** |  | 4.75d | 2019-09-11 08:00 | 2019-09-17 15:00 |  |  |  | 2019-09-10 08:00 | 2019-09-16 15:00 | 4.75d | 31.25d |  |  | 30h |  | 600 | 600 |  |
| 17 | 1.2.1.1 | Reunir-se com o fornecedor de requisitos |  | 0.75d | 2019-09-11 08:00 | 2019-09-11 15:00 | 8 |  |  | 2019-09-10 08:00 | 2019-09-10 15:00 | 0.75d | 31.88d | 0d | Gabriel Marra | 6h |  | 120 | 120 |  |
| 18 | 1.2.1.2 | Elaborar DRE |  | 2d | 2019-09-11 15:00 | 2019-09-13 15:00 | 17 |  |  | 2019-09-10 15:00 | 2019-09-12 15:00 | 2d | 31.88d | 0d | Gabriel Marra | 18h |  | 360 | 360 |  |
| 19 | 1.2.1.3 | Revisar DRE |  | 0.38d | 2019-09-13 15:00 | 2019-09-16 15:00 | 18 |  |  | 2019-09-12 15:00 | 2019-09-13 15:00 | 0.38d | 31.25d | 0d | Leonardo | 3h |  | 60 | 60 |  |
| 20 | 1.2.1.4 | Submeter DRE para aprovação |  | 0.38d | 2019-09-16 15:00 | 2019-09-17 15:00 | 19 |  |  | 2019-09-13 15:00 | 2019-09-16 15:00 | 0.38d | 31.25d | 16.88d | Leonardo | 3h |  | 60 | 60 |  |
| 21 | 1.2.2 | **MRB** |  | 1.5d | 2019-09-12 08:00 | 2019-09-13 12:00 |  |  |  | 2019-10-29 20:00 | 2019-10-30 17:00 | 1d |  |  |  | 11h |  | 220 | 220 |  |
| 22 | 1.2.2.1 | Elaborar MRB | manual | 1d | 2019-09-12 08:00 | 2019-09-12 17:00 |  |  |  | 2019-10-29 20:00 | 2019-10-30 12:00 | 1d |  |  | Gabriel Marra | 8h |  | 160 | 160 |  |
| 23 | 1.2.2.2 | Revisar MRB | manual | 1d | 2019-09-12 08:00 | 2019-09-12 11:00 |  |  |  | 2019-10-30 14:00 | 2019-10-30 17:00 | 0.38d |  |  | Leonardo | 3h |  | 60 | 60 |  |
| 24 | 1.3 | **Implementação** |  | 61.62d? | 2019-10-10 08:00 A | 2020-01-03 14:00 |  | 14% | 52.84d? | 2019-09-16 15:00 | 2019-11-19 22:00 | 46.25d? |  |  |  | 170h | 27h | 3,400 | 3,760 | 540 |
| 25 | 1.3.1 | **Release 01** |  | 18.5d? | 2019-10-10 08:00 A | 2019-11-05 12:00 |  | 36% | 11.86d? | 2019-09-16 15:00 | 2019-11-08 21:00 | 39.25d? |  |  |  | 66h | 27h | 1,320 | 1,680 | 540 |
| 26 | 1.3.1.1 | Implementar RFS01 |  | 1.88d | 2019-10-10 08:00 A | 2019-10-11 16:00 A |  | 100% |  | 2019-10-14 08:00 | 2019-10-15 16:00 | 1.88d |  |  | Gabriel Marra | 15h | 15h | 300 | 300 | 300 |
| 27 | 1.3.1.2 | Implementar RFS02 |  | 1.38d | 2019-10-11 20:00 A | 2019-10-18 21:00 A | 26 | 100% |  | 2019-10-15 20:00 | 2019-10-22 21:00 | 1.38d |  |  | Tomas | 11h | 11h | 220 | 220 | 220 |
| 28 | 1.3.1.3 | Implementar RFS03 |  | 1.5d | 2019-10-21 08:00 | 2019-10-22 12:00 | 27 |  |  | 2019-10-23 14:00 | 2019-10-28 17:00 | 1.5d | 3.5d | 0d |  |  |  |  | 320 |  |
| 29 | 1.3.1.4 | Implementar RFS04 |  | 2.25d | 2019-10-22 20:00 | 2019-11-01 22:00 | 28 |  |  | 2019-10-28 20:00 | 2019-11-07 22:00 | 2.25d | 3d | 1d | Tomas | 18h |  | 360 | 360 |  |
| 30 | 1.3.1.5 | Implementar RFS10 |  | 2.25d? | 2019-10-10 14:00 | 2019-10-17 17:00 | 20 |  |  | 2019-09-16 15:00 | 2019-09-24 15:00 | 2.25d? | 15d | 0d | Leonardo | 18h |  | 360 | 360 |  |
| 31 | 1.3.1.6 | Testar RFS01 |  | 0.12d? | 2019-10-11 16:00 A | 2019-10-11 17:00 A | 26 | 100% |  | 2019-10-15 16:00 | 2019-10-15 17:00 | 0.12d? |  |  | Gabriel Marra | 1h | 1h | 20 | 20 | 20 |
| 32 | 1.3.1.7 | Testar RFS02 |  | 0.33d? | 2019-10-21 08:00 A | 2019-10-21 10:40 A | 27 | 100% |  | 2019-10-23 08:00 | 2019-10-23 10:40 | 0.33d? |  |  |  |  |  |  | 20 |  |
| 33 | 1.3.1.8 | Testar RFS03 |  | 0.25d? | 2019-10-22 13:00 | 2019-10-22 15:00 | 28 |  |  | 2019-10-29 14:00 | 2019-10-29 16:00 | 0.25d? | 13d |  |  |  |  |  | 20 |  |
| 34 | 1.3.1.9 | Testar RFS04 |  | 0.12d? | 2019-11-04 20:00 | 2019-11-04 21:00 | 29 |  |  | 2019-11-08 20:00 | 2019-11-08 21:00 | 0.12d? | 3d |  | Tomas | 1h |  | 20 | 20 |  |
| 35 | 1.3.1.10 | Testar RFS10 |  | 0.12d? | 2019-10-18 08:00 | 2019-10-18 09:00 | 30 |  |  | 2019-09-24 15:00 | 2019-09-24 16:00 | 0.12d? | 15.44d | 0d | Gabriel Marra | 1h |  | 20 | 20 |  |
| 36 | 1.3.1.11 | Atualizar Status Report |  | 0.12d? | 2019-10-18 09:00 | 2019-10-18 10:00 | 35 |  |  | 2019-09-24 16:00 | 2019-09-24 17:00 | 0.12d? | 15.44d | 12.31d | Gabriel Marra | 1h |  | 20 | 20 |  |

| ID | WBS | Task | Duration | Start | Finish | Predecessors | Baseline start | Baseline finish | Baseline duration | Total slack | Free slack | Resources | Work | Cost | Baseline cost |
| --- | --- | --- | --- | --- | --- | --- | --- | --- | --- | --- | --- | --- | --- | --- | --- |
| 37 | 1.3.2 | **Release 02** | 21.92d | 2019-11-05 14:00 | 2019-12-05 13:20 | 25 | 2019-09-25 14:00 | 2019-10-25 13:20 | 21.92d | 3.12d | 0.46d |  | 87h | 1,740 | 1,740 |
| 38 | 1.3.2.1 | Implementar RFS05 | 1.75d | 2019-11-05 14:00 | 2019-11-11 16:00 | 36FS+5% | 2019-09-25 14:00 | 2019-10-01 16:00 | 1.75d | 3.12d | 0.12d | Leonardo | 14h | 280 | 280 |
| 39 | 1.3.2.2 | Implementar RFS06 | 1.62d | 2019-11-11 20:00 | 2019-11-19 21:00 | 38 | 2019-10-01 20:00 | 2019-10-09 21:00 | 1.62d | 3d | 0.62d | Tomas | 13h | 260 | 260 |
| 40 | 1.3.2.3 | Implementar RFS07 | 2.75d | 2019-11-20 18:00 | 2019-11-29 19:00 | 39 | 2019-10-10 18:00 | 2019-10-21 19:00 | 2.75d | 3d | 0d | Gabriel Rocha | 16h | 320 | 320 |
| 41 | 1.3.2.4 | Implementar RFS08 | 1.62d | 2019-12-02 08:00 | 2019-12-03 14:00 | 40 | 2019-10-22 08:00 | 2019-10-23 14:00 | 1.62d | 3.46d | 0d | Gabriel Marra | 18h | 360 | 360 |
| 42 | 1.3.2.5 | Implementar RFS09 | 1.67d | 2019-12-03 14:00 | 2019-12-05 10:20 | 41 | 2019-10-23 14:00 | 2019-10-25 10:20 | 1.67d | 3.46d | 0d | Gabriel Marra [150%] | 20h | 400 | 400 |
| 43 | 1.3.2.6 | Testar RFS05 | 0.12d | 2019-11-11 20:00 | 2019-11-11 21:00 | 38 | 2019-10-01 20:00 | 2019-10-01 21:00 | 0.12d | 20d |  | Tomas | 1h | 20 | 20 |
| 44 | 1.3.2.7 | Testar RFS06 | 0.12d | 2019-11-20 14:00 | 2019-11-20 15:00 | 39 | 2019-10-10 14:00 | 2019-10-10 15:00 | 0.12d | 14.25d |  | Leonardo | 1h | 20 | 20 |
| 45 | 1.3.2.8 | Testar RFS07 | 0.12d | 2019-11-29 20:00 | 2019-11-29 21:00 | 40 | 2019-10-21 20:00 | 2019-10-21 21:00 | 0.12d | 6d |  | Tomas | 1h | 20 | 20 |
| 46 | 1.3.2.9 | Testar RFS08 | 0.12d | 2019-12-03 18:00 | 2019-12-03 19:00 | 41 | 2019-10-23 18:00 | 2019-10-23 19:00 | 0.12d | 4d |  | Gabriel Rocha | 1h | 20 | 20 |
| 47 | 1.3.2.10 | Testar RFS09 | 0.12d | 2019-12-05 10:20 | 2019-12-05 11:20 | 42 | 2019-10-25 10:20 | 2019-10-25 11:20 | 0.12d | 3.46d | 0d | Gabriel Marra | 1h | 20 | 20 |
| 48 | 1.3.2.11 | Atualizar status Report | 0.12d | 2019-12-05 11:20 | 2019-12-05 13:20 | 47 | 2019-10-25 11:20 | 2019-10-25 13:20 | 0.12d | 3.46d | 0.46d | Gabriel Marra | 1h | 20 | 20 |
| 49 | 1.3.3 | **Release 03** | 17d | 2019-12-05 18:00 | 2019-12-30 22:00 | 37 | 2019-10-25 18:00 | 2019-11-19 22:00 | 17d | 3d |  |  | 17h | 340 | 340 |
| 50 | 1.3.3.1 | Implementar RFS11 | 2.62d | 2019-12-05 18:00 | 2019-12-13 21:00 | 48 | 2019-10-25 18:00 | 2019-11-04 21:00 | 2.62d | 3d | 0.62d | Gabriel Rocha | 15h | 300 | 300 |
| 51 | 1.3.3.2 | Testar RFS11 | 0.12d | 2019-12-16 14:00 | 2019-12-16 15:00 | 50 | 2019-11-05 14:00 | 2019-11-05 15:00 | 0.12d | 3.25d | 0.25d | Leonardo | 1h | 20 | 20 |
| 52 | 1.3.3.3 | Atualizar Status Report | 2.75d | 2019-12-16 20:00 | 2019-12-30 22:00 | 51 | 2019-11-05 20:00 | 2019-11-19 22:00 | 2.75d | 3d |  | Tomas [4.5%] | 1h | 20 | 20 |
